# Tiến độ Thi công Cầu Km19+529.080 - 23HG Schedule Assistant Pro

Schedule from MS Project XML, 2026-10-01 to 2027-03-11.

## Schedule

| ID | WBS | Task | Duration | Start | Finish | Predecessors |
| --- | --- | --- | --- | --- | --- | --- |
| 1 | 1 | **CÔNG TÁC CHUẨN BỊ & PHỤ TRỢ THI CÔNG CÔNG TRƯỜNG** | 0d | 2026-10-01 | 2026-10-26 |  |
| 2 | 1.1 | Bàn giao tim mốc VN2000 & định vị mố trụ cầu | 2d | 2026-10-01 | 2026-10-02 |  |
| 3 | 1.2 | Rà phá bom mìn, dọn dẹp mặt bằng & dựng lán trại | 5d | 2026-10-03 | 2026-10-08 | 2 |
| 4 | 1.3 | Thi công đường công vụ nhánh 6 & 6A tiếp cận mố trụ | 9d | 2026-10-09 | 2026-10-19 | 3 |
| 5 | 1.4 | Xây dựng bãi đúc dầm Super-T, bệ đúc & trạm trộn 60m3/h | 12d | 2026-10-13 | 2026-10-26 | 4SS+3d |
| 6 | 2 | **THI CÔNG CỌC KHOAN NHỒI D1200MM (26 CỌC TOÀN CẦU)** | 0d | 2026-10-20 | 2026-12-09 |  |
| 7 | 2.1 | Khoan thăm dò hang Karst sâu 5m vào đá liền khối (26 lỗ) | 10d | 2026-10-20 | 2026-10-30 | 4 |
| 8 | 2.2 | Khoan cọc nhồi D1200 Mố M1 (3 cọc L=20m) & đổ BT C30 | 6d | 2026-10-31 | 2026-11-06 | 7 |
| 9 | 2.3 | Khoan cọc nhồi D1200 Trụ T1 (8 cọc L=40m) & đổ BT C30 | 15d | 2026-11-04 | 2026-11-20 | 8SS+3d |
| 10 | 2.4 | Khoan cọc nhồi D1200 Trụ T2 (8 cọc L=30m) & đổ BT C30 | 13d | 2026-11-11 | 2026-11-25 | 9SS+6d |
| 11 | 2.5 | Khoan cọc nhồi D1200 Mố M2 (7 cọc L=36m) & đổ BT C30 | 14d | 2026-11-17 | 2026-12-02 | 10SS+5d |
| 12 | 2.6 | Thí nghiệm siêu âm 156 mặt cắt cọc, PDA & nén tĩnh | 6d | 2026-12-03 | 2026-12-09 | 11 |
| 13 | 3 | **KẾT CẤU PHẦN DƯỚI (MỐ M1, M2 & TRỤ T1, T2 ĐÃ TÁCH BẠCH)** | 0d | 2026-12-10 | 2027-01-23 |  |
| 14 | 3.1 | Đào hố móng ngàm đá, đập đầu 26 cọc & đổ BT lót C10 (42.15 m3) | 6d | 2026-12-10 | 2026-12-16 | 12 |
| 15 | 3.2 | **Cốt thép, ván khuôn & đổ bê tông bệ móng mố M1, M2 (173.2 m3)** | 7d | 2026-12-17 | 2026-12-24 | 14 |
| 16 | 3.3.1 | Cốt thép, ván khuôn & đổ BT bệ trụ T1 (11.6x8.0x2.0m Zero-vát, 184.2 m3) | 7d | 2026-12-19 | 2026-12-26 | 14FS+2d |
| 17 | 3.3.2 | Cốt thép, ván khuôn & đổ BT bệ trụ T2 (11.6x8.0x2.0m Zero-vát, 184.2 m3) | 7d | 2026-12-24 | 2026-12-31 | 16SS+4d |
| 18 | 3.4.1 | Thi công thân đặc trụ T1 (H=23.35m, 3 đốt vát, 234.9 m3) | 11d | 2026-12-28 | 2027-01-09 | 16 |
| 19 | 3.4.2 | Thi công thân đặc trụ T2 (H=25.45m, 3 đốt vát, 266.8 m3) | 12d | 2027-01-02 | 2027-01-15 | 17 |
| 20 | 3.5 | **Thi công thân mố chân dê M1 & mố chữ U M2 BT C30 (138.4 m3)** | 10d | 2026-12-26 | 2027-01-07 | 15FS+1d |
| 21 | 3.6.1 | Thi công xà mũ trụ T1, đá kê gối & ụ chống xô (128.9 m3) | 6d | 2027-01-11 | 2027-01-16 | 18 |
| 22 | 3.6.2 | Thi công xà mũ trụ T2, đá kê gối & ụ chống xô (145.0 m3) | 7d | 2027-01-16 | 2027-01-23 | 19 |
| 23 | 4 | **CHẾ TẠO & LAO LẮP DẦM SUPER-T L=38.2M (15 PHIẾN)** | 0d | 2026-11-25 | 2027-02-13 |  |
| 24 | 4.1 | Cốt thép, luồn cáp DUL 15 phiến dầm Super-T tại bãi đúc (15 phiến) | 24d | 2026-11-25 | 2026-12-22 | 5FS+25d |
| 25 | 4.2 | Đổ bê tông C45 15 phiến dầm Super-T L=38.2m bãi đúc (434.8 m3) | 18d | 2026-12-16 | 2027-01-06 | 24SS+18d |
| 26 | 4.3 | Căng kéo cáp DUL 15.2mm & bơm vữa ống gen dầm (15 phiến) | 8d | 2027-01-07 | 2027-01-15 | 25 |
| 27 | 4.4 | Lắp đặt 30 gối chậu cao su đơn/song hướng mố trụ (30 cái) | 4d | 2027-01-25 | 2027-01-28 | 21, 22 |
| 28 | 4.5 | Lắp đường ray P43, vận chuyển & lao lắp 15 dầm Super-T (15 phiến) | 7d | 2027-01-29 | 2027-02-13 | 26, 27 |

| ID | WBS | Task | Type | Duration | Start | Finish | Predecessors |
| --- | --- | --- | --- | --- | --- | --- | --- |
| 29 | 5 | **BẢN MẶT CẦU & HOÀN THIỆN TOÀN CẦU** |  | 0d | 2027-02-15 | 2027-03-11 |  |
| 30 | 5.1 | Đổ bê tông dầm ngang mố trụ & bản liên tục nhiệt C35 (78.5 m3) |  | 4d | 2027-02-15 | 2027-02-18 | 28 |
| 31 | 5.2 | Lắp 510 tấm ván khuôn đúc sẵn & cốt thép bản mặt cầu (510 tấm) |  | 4d | 2027-02-19 | 2027-02-23 | 30 |
| 32 | 5.3 | Đổ bê tông bản mặt cầu tại chỗ C35 (dày 180mm, 235.6 m3) |  | 4d | 2027-02-24 | 2027-02-27 | 31 |
| 33 | 5.4 | Đổ bê tông bản quá độ C25 & đắp K98 đường đầu cầu (2 bản) |  | 5d | 2027-02-26 | 2027-03-03 | 32SS+2d, 20FS+20d |
| 34 | 5.5 | Lắp khe co giãn răng lược thép & ống thoát nước PVC (2 bộ) |  | 4d | 2027-03-02 | 2027-03-05 | 32FS+1d |
| 35 | 5.6 | Đổ bê tông gờ lan can C25 & lắp dựng tay vịn thép (260.8 m) |  | 5d | 2027-03-02 | 2027-03-06 | 32FS+1d |
| 36 | 5.7 | Chống thấm & thảm bê tông nhựa C16 mặt cầu dày 7cm (1,620 m2) |  | 3d | 2027-03-08 | 2027-03-10 | 34, 35 |
| 37 | 5.8 | NGHIỆM THU HOÀN THÀNH CÔNG TRÌNH BÀN GIAO THÔNG XE CẦU KM19 | milestone | 0d | 2027-03-11 | 2027-03-11 | 36 |
