# GÓI THẦU SỐ 01: XÂY LẮP ĐƯỜNG GIAO THÔNG (Km 0+000 – Km 5+500)

Schedule from Primavera P6, 2023-12-01 to 2025-11-22, data date 2023-12-01.
Must finish by 2025-11-22

## Schedule

| ID | Activity | Type | Duration | Start | Finish | Predecessors | Complete | Remaining |
| --- | --- | --- | --- | --- | --- | --- | --- | --- |
| 1 | GÓI THẦU SỐ 01: XÂY LẮP ĐƯỜNG GIAO THÔNG (Km 0+000 – Km 5+500) |  | 730d | 2023-12-01 | 2025-11-22 |  | 100% | 0d |
| 1.1 | Công tác chuẩn bị & phụ trợ thi công công trường |  | 85d | 2023-12-01 | 2024-03-16 |  | 100% |  |
| 1.1.1 | Huy động nhân lực, thiết bị & mặt bằng công trường A |  | 25d | 2023-12-01 | 2023-12-29 |  | 100% |  |
| 1.1.3 | Huy động nhân lực, thiết bị & mặt bằng công trường B |  | 25d | 2023-12-01 | 2023-12-29 |  | 100% |  |
| 1.1.2 | Đường công vụ, lán trại, bãi tập kết vật liệu công trường A |  | 60d | 2023-12-30 | 2024-03-16 | 1.1.1 | 100% |  |
| 1.1.4 | Đường công vụ, lán trại, bãi tập kết vật liệu công trường B |  | 60d | 2023-12-30 | 2024-03-16 | 1.1.3 | 100% |  |
| 1.2 | Tuyến chính Phân đoạn A1 (Km 0+000 – Km 2+750, L = 2.75 km) |  | 610d | 2023-12-30 | 2025-06-02 |  | 100% | 0d |
| 1.2.1.1 | Dọn dẹp mặt bằng, phát quang & bóc đất hữu cơ (27.000 m3) |  | 60d | 2023-12-30 | 2024-03-16 | 1.1.1 | 100% |  |
| 1.3 | Tuyến chính Phân đoạn A2 (Km 2+750 – Km 5+500, L = 2.75 km) |  | 630d | 2024-01-18 | 2025-07-25 |  | 100% | 0d |
| 1.3.1.1 | Dọn dẹp mặt bằng, phát quang & bóc đất hữu cơ (20.000 m3) |  | 45d | 2024-01-18 | 2024-03-16 | 1.1.3 FS+15d | 100% |  |
| 1.2.1.2 | Đào đất nền đường & vận chuyển điều phối (145.000 m3) |  | 108d | 2024-01-24 | 2024-06-07 | 1.2.1.1 SS+20d | 100% |  |
| 1.3.1.2 | Đào đất nền đường & vận chuyển điều phối (130.000 m3) |  | 96d | 2024-02-05 | 2024-06-05 | 1.3.1.1 SS+15d | 100% |  |
| 1.2.1.3 | Đào phá đá nền đường bằng búa đập thủy lực (38.000 m3) |  | 146d | 2024-02-17 | 2024-08-08 | 1.2.1.2 SS+15d | 100% | 0d |
| 1.3.1.3 | Đào phá đá nền đường bằng búa đập thủy lực (42.000 m3) |  | 162d | 2024-02-29 | 2024-09-10 | 1.3.1.2 SS+15d | 100% | 0d |
| 1.2.1.6 | Xây dựng cống tròn thoát nước ngang D1000/D1500 (360m) |  | 30d | 2024-03-06 | 2024-04-09 | 1.2.1.2 SS+30d | 100% |  |
| 1.3.1.6 | Xây dựng cống tròn thoát nước ngang D1000/D1500 (420m) |  | 35d | 2024-03-12 | 2024-04-22 | 1.3.1.2 SS+25d | 100% |  |
| 1.2.1.4 | Thi công đắp đất nền đường độ chặt K95 (95.000 m3) |  | 115d | 2024-03-23 | 2024-09-23 | 1.2.1.2 SS+45d | 100% | 0d |
| 1.3.1.4 | Thi công đắp đất nền đường độ chặt K95 (110.000 m3) |  | 133d | 2024-03-29 | 2024-10-26 | 1.3.1.2 SS+40d | 100% | 0d |
| 1.2.1.5 | Thi công đắp đất bao & hoàn thiện nền K98 (18.000 m3) |  | 56d | 2024-09-24 | 2024-11-27 | 1.2.1.4 |  |  |
| 1.2.1.7 | Xây dựng rãnh biên hình thang & gia cố mái taluy (2.400m) |  | 60d | 2024-10-05 | 2024-12-13 | 1.2.1.5 SS+10d |  |  |
| 1.3.1.5 | Thi công đắp đất bao & hoàn thiện nền K98 (22.000 m3) |  | 68d | 2024-10-28 | 2025-01-15 | 1.3.1.4 |  |  |
| 1.3.1.7 | Xây dựng rãnh biên hình thang & gia cố mái taluy (2.600m) |  | 65d | 2024-11-08 | 2025-01-23 | 1.3.1.5 SS+10d |  |  |
| 1.2.1.8 | Thi công móng Cấp phối đá dăm loại 2 (36.000 m2) |  | 20d | 2024-11-28 | 2024-12-20 | 1.2.1.5 |  |  |
| 1.2.1.9 | Thi công móng Cấp phối đá dăm loại 1 (34.000 m2) |  | 20d | 2024-12-23 | 2025-01-15 | 1.2.1.8 FS+1d |  |  |
| 1.3.1.8 | Thi công móng Cấp phối đá dăm loại 2 (38.000 m2) |  | 21d | 2025-01-16 | 2025-02-15 | 1.3.1.5 |  |  |
| 1.2.1.10 | Thi công móng CPĐD gia cố xi măng (CTB - Mùa khô T1/25) |  | 15d | 2025-01-17 | 2025-02-10 | 1.2.1.9 FS+1d |  |  |
| 1.3.1.9 | Thi công móng Cấp phối đá dăm loại 1 (36.000 m2) |  | 21d | 2025-02-18 | 2025-03-13 | 1.3.1.8 FS+1d |  |  |
| 1.2.1.11 | Mặt đường BTN C19 (7cm) & BTN C12.5 (5cm) (Mùa khô T2-4/25) |  | 50d | 2025-02-22 | 2025-04-22 | 1.2.1.10 FS+10d |  |  |
| 1.3.1.10 | Thi công móng CPĐD gia cố xi măng (CTB - Mùa khô T3/25) |  | 16d | 2025-03-15 | 2025-04-02 | 1.3.1.9 FS+1d |  |  |
| 1.3.1.11 | Mặt đường BTN C19 (7cm) & BTN C12.5 (5cm) (Mùa khô T3-5/25) |  | 52d | 2025-04-16 | 2025-06-17 | 1.3.1.10 FS+10d |  |  |
| 1.2.1.12 | Lắp đặt hệ thống ATGT: Sơn đường, biển báo, hộ lan Phân đoạn A1 |  | 28d | 2025-04-29 | 2025-06-02 | 1.2.1.11 FS+5d |  |  |
| 1.3.1.12 | Lắp đặt hệ thống ATGT: Sơn đường, biển báo, hộ lan Phân đoạn A2 |  | 28d | 2025-06-24 | 2025-07-25 | 1.3.1.11 FS+5d |  |  |
| 1.4 | Công tác hoàn thiện, nghiệm thu bàn giao & hoàn công |  | 120d | 2025-08-01 | 2025-11-22 |  |  |  |
| 1.4.1 | Thí nghiệm kiểm tra độ bằng phẳng thước 3m, độ nhám, Benkelman |  | 20d | 2025-08-01 | 2025-08-23 | 1.3.1.12 FS+5d |  |  |
| 1.4.2 | Dọn dẹp mặt bằng, hoàn trả đường công vụ & vệ sinh môi trường |  | 25d | 2025-08-25 | 2025-09-24 | 1.4.1 |  |  |
| 1.4.3 | Lập trọn bộ hồ sơ hoàn công & hồ sơ QLCL (NĐ 207/2026/NĐ-CP) |  | 45d | 2025-09-25 | 2025-11-15 | 1.4.2 |  |  |
| 1.4.4 | NGHIỆM THU HOÀN THÀNH CÔNG TRÌNH BÀN GIAO ĐƯA VÀO SỬ DỤNG | milestone | 0d | 2025-11-22 | 2025-11-22 | 1.4.3 FS+5d |  |  |

| WBS | Activity |
| --- | --- |
| 1.1 | **Công tác chuẩn bị & phụ trợ thi công công trường** |
| 1.2 | **Tuyến chính Phân đoạn A1 (Km 0+000 – Km 2+750, L = 2.75 km)** |
| 1.3 | **Tuyến chính Phân đoạn A2 (Km 2+750 – Km 5+500, L = 2.75 km)** |
| 1.4 | **Công tác hoàn thiện, nghiệm thu bàn giao & hoàn công** |
